# new Gantte2

Schedule from MS Project, 2017-10-02 to 2018-01-11, status date 2017-11-13, 2 hours a day, A marks actual dates.
mycomputer

## Calendars

- 标准: Mon-Fri 08:00-12:00, 13:00-17:00; Sat-Sun off. Exceptions (off unless hours are given): 2017-10-15 08:00-12:00, 13:00-17:00, 2017-12-09 08:00-12:00, 13:00-17:00, 2017-12-17 08:00-12:00, 13:00-17:00, 2017-12-23 08:00-12:00, 13:00-17:00, 2018-01-06 08:00-12:00, 13:00-17:00.

## Resources

| Resource |
| --- |
| 叶港归 |
| 马思旖 |
| 周皙昊 |

## Schedule

| ID | WBS | Task | Type | Duration | Start | Finish | Predecessors | Complete | Remaining | Actual finish | Constraint | Deadline | Resources | Work | Actual work |
| --- | --- | --- | --- | --- | --- | --- | --- | --- | --- | --- | --- | --- | --- | --- | --- |
| 1 | 1 | **RPG游戏开发** |  | 318.5d | 2017-10-02 A | 2018-01-11 |  | 85% | 48.42d |  |  | 2018-01-10 |  | 1207.14h | 912.14h |
| 2 | 1.1 | **项目介绍** |  | 42.5d | 2017-10-02 A | 2017-10-13 A |  | 100% |  |  |  |  |  | 64.33h | 64.33h |
| 3 | 1.1.1 | 会议讨论 | manual | 1d | 2017-10-02 A | 2017-10-02 A |  | 100% |  |  |  |  | 马思旖; 叶港归; 周皙昊 | 6h | 6h |
| 4 | 1.1.2 | 研究项目目标 | manual | 10d | 2017-10-02 A | 2017-10-04 A |  | 100% |  |  | finish no earlier than 2017-10-06 |  | 叶港归; 马思旖; 周皙昊 | 28.33h | 28.33h |
| 5 | 1.1.3 | 项目计划调整 | manual | 1d | 2017-10-13 A | 2017-10-13 A | 4 | 100% |  |  |  |  | 马思旖; 叶港归; 周皙昊 | 6h | 6h |
| 6 | 1.1.4 | 确认项目目标 | manual | 4d | 2017-10-13 A | 2017-10-13 A | 5 | 100% |  |  | must finish on 2017-10-13 |  | 马思旖; 叶港归; 周皙昊 | 24h | 24h |
| 7 | 1.2 | **项目计划** |  | 57d | 2017-10-09 A | 2017-10-26 |  | 100% |  | 2017-10-25 |  |  |  | 118h | 118h |
| 8 | 1.2.1 | 会议讨论 | manual | 1d | 2017-10-15 A | 2017-10-15 A |  | 100% |  |  | finish no earlier than 2017-10-15 |  | 马思旖; 叶港归; 周皙昊 | 6h | 6h |
| 9 | 1.2.2 | wbs绘制 | manual | 2d | 2017-10-10 A | 2017-10-10 A |  | 100% |  |  | start no earlier than 2017-10-09 |  | 马思旖 | 4h | 4h |
| 10 | 1.2.3 | 甘特图绘制 | manual | 3d | 2017-10-09 A | 2017-10-10 A |  | 100% |  |  | finish no earlier than 2017-10-12 |  | 叶港归 | 6h | 6h |
| 11 | 1.2.4 | 项目计划书编写 | manual | 32d | 2017-10-09 A | 2017-10-17 A | 6 | 100% |  |  | must finish on 2017-10-18 |  | 叶港归 | 64h | 64h |
| 12 | 1.2.5 | 项目计划书修订 | manual | 1d | 2017-10-18 A | 2017-10-18 A | 11 | 100% |  |  |  |  | 叶港归 | 2h | 2h |
| 13 | 1.2.6 | 项目计划ppt | manual | 24d | 2017-10-17 A | 2017-10-24 A |  | 100% |  |  | must finish on 2017-10-24 |  | 马思旖 | 24h | 24h |
| 14 | 1.2.7 | 项目计划ppt修订 | manual | 1d | 2017-10-25 A | 2017-10-25 A | 13 | 100% |  |  |  |  | 马思旖 | 2h | 2h |
| 15 | 1.2.8 | 甘特图调整 | manual | 1d | 2017-10-25 A | 2017-10-25 A | 10 | 100% |  |  |  |  | 叶港归 | 2h | 2h |
| 16 | 1.2.9 | 提交项目计划 | manual | 4d | 2017-10-25 A | 2017-10-25 A | 8, 9, 10, 11, 12, 13, 14, 15 | 100% |  |  | must finish on 2017-10-25 |  | 周皙昊 | 8h | 8h |
| 17 | 1.3 | **可行性分析** |  | 66.5d | 2017-10-18 A | 2017-11-08 |  | 100% |  | 2017-11-07 |  |  |  | 52h | 52h |
| 18 | 1.3.1 | 会议讨论 | manual | 1d | 2017-10-20 A | 2017-10-20 A |  | 100% |  |  | finish no earlier than 2017-10-20 |  | 马思旖; 叶港归; 周皙昊 | 6h | 6h |
| 19 | 1.3.2 | 可行性分析报告 | manual | 24d | 2017-10-18 A | 2017-10-25 A |  | 100% |  |  | start no earlier than 2017-10-18 |  | 周皙昊 | 24h | 24h |
| 20 | 1.3.3 | 可行性分析修订 | manual | 20d | 2017-10-31 A | 2017-11-06 A | 19 | 100% |  |  | finish no earlier than 2017-10-31 |  | 周皙昊 | 12h | 12h |
| 21 | 1.3.4 | 甘特图修改 | manual | 1d | 2017-11-07 A | 2017-11-07 A | 15 | 100% |  |  |  |  | 叶港归 | 2h | 2h |
| 22 | 1.3.5 | 提交报告 | manual | 4d | 2017-11-07 A | 2017-11-07 A | 21, 18, 19, 20 | 100% |  |  | start no earlier than 2017-11-01 |  | 马思旖 | 8h | 8h |
| 23 | 1.4 | **需求分析** |  | 56.5d | 2017-10-26 A | 2017-11-15 A |  | 100% |  |  |  |  |  | 139h | 139h |
| 24 | 1.4.1 | 会议讨论 | manual | 1d | 2017-10-26 A | 2017-10-26 A |  | 100% |  |  | finish no earlier than 2017-10-26 |  | 马思旖; 叶港归; 周皙昊 | 6h | 6h |
| 25 | 1.4.2 | 需求分析报告 | manual | 20d | 2017-11-05 A | 2017-11-10 A |  | 100% |  |  | finish no earlier than 2017-11-11 |  | 叶港归 | 24h | 24h |
| 26 | 1.4.3 | 数据字典定义 | manual | 1d | 2017-11-13 A | 2017-11-13 A |  | 100% |  |  |  |  | 周皙昊 | 2h | 2h |
| 27 | 1.4.4 | ER图绘制 | manual | 1d | 2017-11-13 A | 2017-11-13 A |  | 100% |  |  |  |  | 叶港归 | 2h | 2h |
| 28 | 1.4.5 | 需求分析修订 |  | 7.5d | 2017-11-10 A | 2017-11-14 A | 25 | 100% |  |  | start no earlier than 2017-11-10 |  | 叶港归 | 17h | 17h |
| 29 | 1.4.6 | 界面原型设计 | manual | 20d | 2017-11-05 A | 2017-11-10 A |  | 100% |  |  | finish no earlier than 2017-11-11 |  | 马思旖 | 24h | 24h |
| 30 | 1.4.7 | 需求分析ppt | manual | 12d | 2017-11-07 A | 2017-11-10 A |  | 100% |  |  | finish no earlier than 2017-11-11 |  | 马思旖 | 24h | 24h |
| 31 | 1.4.8 | 用户代表确立 | manual | 1d | 2017-11-13 A | 2017-11-13 A |  | 100% |  |  |  |  | 马思旖 | 2h | 2h |
| 32 | 1.4.9 | 用户代表采访 | manual | 1d | 2017-11-13 A | 2017-11-13 A | 31 | 100% |  |  |  |  | 马思旖 | 2h | 2h |
| 33 | 1.4.10 | 界面原型修订 | manual | 0.5d | 2017-11-13 A | 2017-11-13 A | 32, 29 | 100% |  |  |  |  | 叶港归; 周皙昊 | 2h | 2h |
| 34 | 1.4.11 | 需求分析ppt修订 | manual | 2d | 2017-11-10 A | 2017-11-10 A | 30 | 100% |  |  |  |  | 马思旖 | 4h | 4h |
| 35 | 1.4.12 | 提交需求分析 |  | 15d | 2017-11-08 A | 2017-11-15 A | 28, 29 | 100% |  |  | finish no earlier than 2017-11-11 |  | 周皙昊 | 30h | 30h |

| ID | WBS | Task | Type | Duration | Start | Finish | Predecessors | Complete | Remaining | Total slack | Free slack | Constraint | Resources | Work | Actual work |
| --- | --- | --- | --- | --- | --- | --- | --- | --- | --- | --- | --- | --- | --- | --- | --- |
| 36 | 1.5 | **项目设计** |  | 78.5d | 2017-11-09 A | 2017-12-05 A |  | 100% |  |  |  |  |  | 293h | 293h |
| 37 | 1.5.1 | 会议讨论 | milestone | 0d? | 2017-11-17 A | 2017-11-17 A |  | 100% |  |  |  | finish no earlier than 2017-11-09 |  |  |  |
| 38 | 1.5.2 | 总体设计 | manual | 40d | 2017-11-09 A | 2017-11-22 A |  | 100% |  |  |  | must finish on 2017-11-22 | 马思旖; 周皙昊 | 60h | 60h |
| 39 | 1.5.3 | 会议讨论 | milestone | 0d? | 2017-11-24 A | 2017-11-24 A |  | 100% |  |  |  | start no earlier than 2017-11-24 |  |  |  |
| 40 | 1.5.4 | 详细设计 | manual | 44d | 2017-11-16 A | 2017-11-30 A |  | 100% |  |  |  | must finish on 2017-11-30 | 叶港归; 周皙昊 | 108h | 108h |
| 41 | 1.5.5 | 会议讨论 | milestone | 0d? | 2017-11-30 A | 2017-11-30 A | 40 | 100% |  |  |  |  |  |  |  |
| 42 | 1.5.6 | 设计ppt | manual | 30.5d | 2017-11-23 A | 2017-12-01 A |  | 100% |  |  |  | must finish on 2017-12-01 | 马思旖; 叶港归; 周皙昊 | 123h | 123h |
| 43 | 1.5.7 | 提交项目设计 | manual | 1d | 2017-12-05 A | 2017-12-05 A |  | 100% |  |  |  | start no earlier than 2017-12-05 | 马思旖 | 2h | 2h |
| 44 | 1.6 | **实现** |  | 39.5d? | 2017-11-30 A | 2017-12-13 A |  | 100% |  |  |  |  |  | 162.8h | 162.8h |
| 45 | 1.6.1 | 代码规范编写 | manual | 3.5d | 2017-11-30 A | 2017-11-30 A |  | 100% |  |  |  | finish no earlier than 2017-12-13 | 马思旖; 叶港归; 周皙昊 | 8.66h | 8.66h |
| 46 | 1.6.2 | 编码 | manual | 39.5d | 2017-11-30 A | 2017-12-12 A |  | 100% |  |  |  | finish no earlier than 2017-12-13 | 马思旖; 叶港归; 周皙昊 | 154.14h | 154.14h |
| 47 | 1.6.3 | 会议讨论 |  | 1d? | 2017-12-05 A | 2017-12-05 A |  | 100% |  |  |  | start no earlier than 2017-12-04 |  |  |  |
| 48 | 1.6.4 | 会议讨论 |  | 1d? | 2017-12-11 A | 2017-12-11 A |  | 100% |  |  |  | start no earlier than 2017-12-09 |  |  |  |
| 49 | 1.6.5 | 用户手册书写 |  | 1d? | 2017-12-12 A | 2017-12-12 A |  | 100% |  |  |  | start no earlier than 2017-12-11 |  |  |  |
| 50 | 1.6.6 | 代码走查 |  | 1d? | 2017-12-13 A | 2017-12-13 A |  | 100% |  |  |  | start no earlier than 2017-12-12 |  |  |  |
| 51 | 1.7 | **项目测试** |  | 80d? | 2017-12-14 A | 2018-01-06 | 36 | 99% | 0d? | -12d | 0d |  |  | 83h | 83h |
| 52 | 1.7.1 | 测试报告计划编写 |  | 40d? | 2017-12-14 A | 2017-12-25 A |  | 100% |  |  |  | finish no earlier than 2017-12-25 |  |  |  |
| 53 | 1.7.2 | 测试用例编写 |  | 40d? | 2017-12-14 A | 2017-12-25 A |  | 100% |  |  |  | finish no earlier than 2017-12-25 |  |  |  |
| 54 | 1.7.3 | 软件测试 |  | 36.5d | 2017-12-15 A | 2017-12-25 A | 46, 45 | 100% |  |  |  | start no earlier than 2017-12-15 | 马思旖; 叶港归; 周皙昊 | 75h | 75h |
| 55 | 1.7.4 | 会议讨论 |  | 1d? | 2017-12-18 A | 2017-12-18 A |  | 100% |  |  |  | start no earlier than 2017-12-17 |  |  |  |
| 56 | 1.7.5 | 提交项目测试 | manual | 1d | 2017-12-25 A | 2017-12-25 A |  | 100% |  |  |  |  | 马思旖 | 2h | 2h |
| 57 | 1.7.6 | 会议讨论 |  | 1d? | 2017-12-25 A | 2017-12-25 A |  | 100% |  |  |  | start no earlier than 2017-12-23 |  |  |  |
| 58 | 1.7.7 | 项目计划修改 | manual | 1d | 2017-12-31 A | 2017-12-31 A |  | 100% |  |  |  |  | 马思旖 | 2h | 2h |
| 59 | 1.7.8 | 概要设计修改 | manual | 1d | 2018-01-02 A | 2018-01-02 A |  | 100% |  |  |  |  | 马思旖 | 2h | 2h |
| 60 | 1.7.9 | 详细设计修改 | manual | 1d | 2018-01-03 A | 2018-01-03 A |  | 100% |  |  |  |  | 马思旖 | 2h | 2h |
| 61 | 1.7.10 | 测试评审 | milestone | 0d? | 2018-01-06 | 2018-01-06 |  |  |  | -28d | 0d | start no earlier than 2018-01-06 |  |  |  |

| ID | WBS | Task | Type | Duration | Start | Finish | Predecessors | Resources | Work |
| --- | --- | --- | --- | --- | --- | --- | --- | --- | --- |
| 62 | 1.8 | **项目验收** |  | 48.5d | 2017-12-27 | 2018-01-10 | 44, 51 |  | 203h |
| 63 | 1.8.1 | 验收ppt准备 | manual | 36.5d | 2017-12-28 | 2018-01-09 |  | 马思旖 | 73h |
| 64 | 1.8.2 | app验收 | manual | 32.5d | 2018-01-01 | 2018-01-10 |  | 叶港归; 周皙昊 | 130h |
| 65 | 1.9 | **项目总结** |  | 24.5d | 2018-01-04 | 2018-01-10 | 62 |  | 92h |
| 66 | 1.9.1 | 项目总结文档书写 | manual | 12.5d | 2018-01-04 | 2018-01-08 |  | 马思旖; 叶港归; 周皙昊 | 75h |
| 67 | 1.9.2 | 项目总结ppt书写 | manual | 8.5d | 2018-01-09 | 2018-01-10 |  | 马思旖 | 17h |
